# Cronograma

Schedule from MS Project, 2016-04-29 to 2016-06-23, costs in R$, A marks actual dates.

## Calendars

- Padrão: Mon-Fri 09:00-12:00, 13:00-18:00; Sat-Sun off.

## Resources

| Resource | Rate |
| --- | --- |
| Carlos | 100 |
| David | 100 |
| Gabriel | 100 |
| Henrique | 100 |
| Joyce | 100 |
| Samuel | 100 |
| Adler |  |

## Schedule

| ID | WBS | Task | Type | Duration | Start | Finish | Predecessors | Complete | Remaining | Actual start | Constraint | Resources | Work | Actual work | Cost | Actual cost |
| --- | --- | --- | --- | --- | --- | --- | --- | --- | --- | --- | --- | --- | --- | --- | --- | --- |
| 1 | 1 | **CooAgro** |  | 40d | 2016-04-29 09:00 A | 2016-06-23 18:00 |  | 90% | 4.04d |  |  |  | 616.82h | 499.92h | 61,381.82 | 49,691.82 |
| 2 | 1.1 | **Prospecção** |  | 5d | 2016-04-29 09:00 A | 2016-05-05 18:00 A |  | 100% |  |  |  |  | 29.82h | 29.82h | 2,781.82 | 2,781.82 |
| 3 | 1.1.1 | **Ptec** |  | 5d | 2016-04-29 09:00 A | 2016-05-05 18:00 A |  | 100% |  |  |  |  | 23h | 23h | 2,100 | 2,100 |
| 4 | 1.1.1.1 | Estudar dominio | manual | 0.88d | 2016-04-29 09:00 A | 2016-04-29 17:00 A |  | 100% |  |  |  | Carlos | 2h | 2h | 200 | 200 |
| 5 | 1.1.1.2 | Reuniões como cliente | manual | 2d | 2016-04-29 17:00 A | 2016-05-03 18:00 A | 4 | 100% |  |  |  | Carlos | 2h | 2h | 200 | 200 |
| 6 | 1.1.1.3 | Redigir Proposta | manual | 3d | 2016-05-03 09:00 A | 2016-05-05 18:00 A | 5 | 100% |  |  |  | Carlos; Gabriel; Joyce | 15h | 15h | 1,500 | 1,500 |
| 7 | 1.1.1.4 | Revisar proposta | manual | 1d | 2016-05-05 09:00 A | 2016-05-05 18:00 A | 6 | 100% |  |  |  | Samuel | 2h | 2h | 200 | 200 |
| 8 | 1.1.1.5 | Aprova porposta | manual | 1d | 2016-05-05 09:00 A | 2016-05-05 18:00 A |  | 100% |  |  | start no earlier than 2016-05-05 09:00 | Adler | 2h | 2h |  |  |
| 9 | 1.1.2 | **Est. Pre. Tam** |  | 1d | 2016-05-05 09:00 A | 2016-05-05 18:00 A | 3 | 100% |  |  |  |  | 6.82h | 6.82h | 681.82 | 681.82 |
| 10 | 1.1.2.1 | Estimar tamanho do projeto | manual | 1d | 2016-05-05 09:00 A | 2016-05-05 18:00 A | 7 | 100% |  |  |  | Carlos | 6h | 6h | 600 | 600 |
| 11 | 1.1.2.2 | Revisar estimativa de tamanho | manual | 1d | 2016-05-05 09:00 A | 2016-05-05 18:00 A | 10 | 100% |  |  |  | David; Gabriel; Joyce; Samuel | 0.82h | 0.82h | 81.82 | 81.82 |
| 12 | 1.2 | **Análise** |  | 6d | 2016-05-06 09:00 | 2016-05-13 18:00 A | 2 | 100% |  | 2016-05-07 09:00 |  |  | 81h | 81h | 8,000 | 8,000 |
| 13 | 1.2.1 | Elicitação dos requisitos | manual | 2d | 2016-05-07 09:00 A | 2016-05-09 18:00 A | 7 | 100% |  |  |  | Carlos | 4h | 4h | 400 | 400 |
| 14 | 1.2.2 | Validação | manual | 0.12d | 2016-05-10 17:00 A | 2016-05-10 18:00 A | 13 | 100% |  |  |  | David; Gabriel; Joyce; Samuel | 2h | 2h | 200 | 200 |
| 15 | 1.2.3 | **Doc Req** |  | 4d | 2016-05-09 09:00 A | 2016-05-12 18:00 A | 14 | 100% |  |  |  |  | 57h | 57h | 5,600 | 5,600 |
| 16 | 1.2.3.1 | Reunir com o cliente | manual | 1d | 2016-05-09 09:00 A | 2016-05-09 18:00 A |  | 100% |  |  |  | Carlos | 6h | 6h | 600 | 600 |
| 17 | 1.2.3.2 | Redigir Doc Req | manual | 4d | 2016-05-09 09:00 A | 2016-05-12 18:00 A |  | 100% |  |  |  | David; Gabriel; Joyce; Samuel | 48h | 48h | 4,800 | 4,800 |
| 18 | 1.2.3.3 | Revisar Doc Req | manual | 1d | 2016-05-12 09:00 A | 2016-05-12 18:00 A |  | 100% |  |  |  | Carlos | 2h | 2h | 200 | 200 |
| 19 | 1.2.3.4 | Submenter o Doc Req | manual | 0.12d | 2016-05-12 09:00 A | 2016-05-12 10:00 A | 16 | 100% |  |  |  | Adler | 1h | 1h |  |  |
| 20 | 1.2.4 | **Matriz de Rastriabilidade** |  | 4d | 2016-05-09 09:00 A | 2016-05-12 18:00 A |  | 100% |  |  |  |  | 13h | 13h | 1,300 | 1,300 |
| 21 | 1.2.4.1 | Elaborar a matriz | manual | 4d | 2016-05-09 09:00 A | 2016-05-12 18:00 A |  | 100% |  |  |  | Carlos | 12h | 12h | 1,200 | 1,200 |
| 22 | 1.2.4.2 | Revisar a Matriz | manual | 1d | 2016-05-12 09:00 A | 2016-05-12 18:00 A | 21 | 100% |  |  |  | David; Gabriel; Joyce; Samuel | 1h | 1h | 100 | 100 |
| 23 | 1.2.5 | **Cronograma e Orçamentos Preliminares** |  | 2d | 2016-05-12 09:00 A | 2016-05-13 18:00 A | 9 | 100% |  |  |  |  | 5h | 5h | 500 | 500 |
| 24 | 1.2.5.1 | Elaborar Cronograma e Orçamentos Preliminares | manual | 2d | 2016-05-12 09:00 A | 2016-05-13 18:00 A | 9 | 100% |  |  |  | Carlos | 3h | 3h | 300 | 300 |
| 25 | 1.2.5.2 | Revisão da Elaboração | manual | 2d | 2016-05-12 09:00 A | 2016-05-13 18:00 A | 24 | 100% |  |  |  | David; Gabriel; Joyce; Samuel | 2h | 2h | 200 | 200 |

| ID | WBS | Task | Type | Duration | Start | Finish | Predecessors | Complete | Remaining | Actual start | Actual finish | Resources | Work | Actual work | Cost | Actual cost |
| --- | --- | --- | --- | --- | --- | --- | --- | --- | --- | --- | --- | --- | --- | --- | --- | --- |
| 26 | 1.3 | **Projeto** |  | 5d | 2016-05-13 09:00 | 2016-05-19 18:00 A | 12 | 100% |  | 2016-05-12 09:00 |  |  | 48h | 48h | 4,800 | 4,800 |
| 27 | 1.3.1 | **UML** |  | 3d? | 2016-05-12 09:00 A | 2016-05-16 18:00 A |  | 100% |  |  |  |  | 24h | 24h | 2,400 | 2,400 |
| 28 | 1.3.1.1 | Elaborar diagramas | manual | 2d | 2016-05-12 09:00 A | 2016-05-13 18:00 A |  | 100% |  |  |  | Carlos; Gabriel; Joyce | 18h | 18h | 1,800 | 1,800 |
| 29 | 1.3.1.2 | Revisar diagramas | manual | 1d | 2016-05-16 09:00 A | 2016-05-16 18:00 A | 28 | 100% |  |  |  | Carlos; Gabriel; Joyce | 4h | 4h | 400 | 400 |
| 30 | 1.3.1.3 | Atualizar MRB | manual | 1d | 2016-05-16 09:00 A | 2016-05-16 18:00 A | 29 | 100% |  |  |  | Carlos; Gabriel; Joyce | 2h | 2h | 200 | 200 |
| 31 | 1.3.2 | **Modelagem do banco de dados** |  | 4d? | 2016-05-16 09:00 A | 2016-05-19 18:00 A |  | 100% |  |  |  |  | 24h | 24h | 2,400 | 2,400 |
| 32 | 1.3.2.1 | Modelo Entidade Relaconamento | manual | 2d | 2016-05-16 09:00 A | 2016-05-17 18:00 A |  | 100% |  |  |  | Carlos | 12h | 12h | 1,200 | 1,200 |
| 33 | 1.3.2.2 | Modelo Lógico | manual | 2d | 2016-05-17 09:00 A | 2016-05-18 18:00 A | 32 | 100% |  |  |  | Carlos | 6h | 6h | 600 | 600 |
| 34 | 1.3.2.3 | Modelo fisico | manual | 2d | 2016-05-18 09:00 A | 2016-05-19 18:00 A | 33 | 100% |  |  |  | Carlos | 4h | 4h | 400 | 400 |
| 35 | 1.3.2.4 | Revisar MBD | manual | 1d | 2016-05-19 09:00 A | 2016-05-19 18:00 A | 34 | 100% |  |  |  | Carlos | 2h | 2h | 200 | 200 |
| 36 | 1.4 | **Implementação** |  | 26d | 2016-05-19 09:00 | 2016-06-23 18:00 | 26 | 83% | 4.48d | 2016-05-16 09:00 |  |  | 458h | 341.1h | 45,800 | 34,110 |
| 37 | 1.4.1 | **Estudar FrameWork** |  | 6d | 2016-05-19 09:00 | 2016-05-26 18:00 |  | 100% |  | 2016-05-16 09:00 | 2016-05-18 18:00 |  | 36h | 36h | 3,600 | 3,600 |
| 38 | 1.4.1.1 | Escolher FrameWork Adequado | manual | 1d | 2016-05-16 09:00 A | 2016-05-16 18:00 A |  | 100% |  |  |  | Carlos; David; Gabriel; Joyce; Samuel | 4h | 4h | 400 | 400 |
| 39 | 1.4.1.2 | Ler documentação | manual | 1d | 2016-05-17 09:00 A | 2016-05-17 18:00 A | 38 | 100% |  |  |  | Carlos; David; Gabriel; Joyce; Samuel | 16h | 16h | 1,600 | 1,600 |
| 40 | 1.4.1.3 | Implementar exemplos | manual | 1d | 2016-05-18 09:00 A | 2016-05-18 18:00 A | 39 | 100% |  |  |  | Carlos; David; Gabriel; Joyce; Samuel | 16h | 16h | 1,600 | 1,600 |
| 41 | 1.4.2 | **Release1** |  | 6d | 2016-05-26 09:00 A | 2016-06-02 18:00 | 37 | 100% |  |  | 2016-06-02 17:00 |  | 92h | 92h | 9,200 | 9,200 |
| 42 | 1.4.2.1 | **Implementação** |  | 5d | 2016-05-26 09:00 A | 2016-06-01 18:00 |  | 100% |  |  | 2016-06-02 17:00 |  | 88h | 88h | 8,800 | 8,800 |
| 43 | 1.4.2.1.1 | Estruturação do sistema | manual | 1.5d | 2016-05-26 09:00 A | 2016-05-27 17:00 A |  | 100% |  |  |  | Carlos | 8h | 8h | 800 | 800 |
| 44 | 1.4.2.1.2 | Funcão de autenticação e validação das rotas | manual | 5.5d | 2016-05-26 09:00 A | 2016-06-02 17:00 A |  | 100% |  |  |  | Carlos | 32h | 32h | 3,200 | 3,200 |
| 45 | 1.4.2.1.3 | [RFS1] Cadastrar usuário (Atendente) | manual | 2.5d | 2016-05-26 09:00 A | 2016-05-28 17:00 A |  | 100% |  |  |  | Samuel | 12h | 12h | 1,200 | 1,200 |
| 46 | 1.4.2.1.4 | [RFS2] Consultar usuário (atendente) | manual | 1.25d | 2016-05-26 09:00 A | 2016-05-27 15:00 A |  | 100% |  |  |  | Carlos; Samuel | 12h | 12h | 1,200 | 1,200 |
| 47 | 1.4.2.1.5 | [RFS3] Alterar usuário (atendente) | manual | 1.25d | 2016-05-26 09:00 A | 2016-05-27 15:00 A |  | 100% |  |  |  | Carlos; Samuel | 12h | 12h | 1,200 | 1,200 |
| 48 | 1.4.2.1.6 | [RFS4] Remover usuário (atendente) | manual | 2.5d | 2016-05-26 09:00 A | 2016-05-28 17:00 A |  | 100% |  |  |  | Samuel | 12h | 12h | 1,200 | 1,200 |
| 49 | 1.4.2.2 | **Teste** |  | 0.62d | 2016-06-02 09:00 A | 2016-06-02 15:00 A | 42 | 100% |  |  |  |  | 4h | 4h | 400 | 400 |
| 50 | 1.4.2.2.1 | Teste de autenticação e validação | manual | 0.25d | 2016-06-02 09:00 A | 2016-06-02 15:00 A |  | 100% |  |  |  | Joyce | 2h | 2h | 200 | 200 |
| 51 | 1.4.2.2.2 | Teste de CRUD (atendente) | manual | 0.25d | 2016-06-02 09:00 A | 2016-06-02 15:00 A |  | 100% |  |  |  | Joyce | 2h | 2h | 200 | 200 |

| ID | WBS | Task | Type | Duration | Start | Finish | Predecessors | Complete | Remaining | Actual finish | Resources | Work | Actual work | Cost | Actual cost |
| --- | --- | --- | --- | --- | --- | --- | --- | --- | --- | --- | --- | --- | --- | --- | --- |
| 52 | 1.4.3 | **Release2** |  | 6d | 2016-06-02 09:00 A | 2016-06-09 18:00 | 41 | 100% |  | 2016-06-08 18:00 |  | 92h | 92h | 9,200 | 9,200 |
| 53 | 1.4.3.1 | **Implementação** |  | 5d | 2016-06-02 09:00 A | 2016-06-08 18:00 |  | 100% |  | 2016-06-04 17:00 |  | 88h | 88h | 8,800 | 8,800 |
| 54 | 1.4.3.1.1 | [RFS5] Cadastrar usuário Associado | manual | 2.5d | 2016-06-02 09:00 A | 2016-06-04 17:00 A |  | 100% |  |  | Samuel | 12h | 12h | 1,200 | 1,200 |
| 55 | 1.4.3.1.2 | [RFS6] Consultar Associado | manual | 2.5d | 2016-06-02 09:00 A | 2016-06-04 17:00 A |  | 100% |  |  | Samuel | 12h | 12h | 1,200 | 1,200 |
| 56 | 1.4.3.1.3 | [RFS7] Alterar Associado | manual | 2.25d | 2016-06-02 09:00 A | 2016-06-04 15:00 A |  | 100% |  |  | Samuel | 10h | 10h | 1,000 | 1,000 |
| 57 | 1.4.3.1.4 | [RFS8] Remover Associado | manual | 2.25d | 2016-06-02 09:00 A | 2016-06-04 15:00 A |  | 100% |  |  | Samuel | 10h | 10h | 1,000 | 1,000 |
| 58 | 1.4.3.1.5 | [RFS13] Cadastrar Insumo | manual | 0.46d | 2016-06-02 09:00 A | 2016-06-02 16:40 A |  | 100% |  |  | Carlos; Gabriel; Joyce | 11h | 11h | 1,100 | 1,100 |
| 59 | 1.4.3.1.6 | [RFS14] Consultar Insumo | manual | 1.19d | 2016-06-02 09:00 A | 2016-06-03 14:30 A |  | 100% |  |  | Gabriel; Joyce | 11h | 11h | 1,100 | 1,100 |
| 60 | 1.4.3.1.7 | [RFS15] Alterar Insumo | manual | 0.46d | 2016-06-02 09:00 A | 2016-06-02 16:40 A |  | 100% |  |  | Carlos; Gabriel; Joyce | 11h | 11h | 1,100 | 1,100 |
| 61 | 1.4.3.1.8 | [RFS16] Remover Insumo | manual | 0.46d | 2016-06-02 09:00 A | 2016-06-02 16:40 A |  | 100% |  |  | Carlos; Gabriel; Joyce | 11h | 11h | 1,100 | 1,100 |
| 62 | 1.4.3.2 | **Teste** |  | 2d | 2016-06-08 09:00 A | 2016-06-09 18:00 |  | 100% |  | 2016-06-08 18:00 |  | 4h | 4h | 400 | 400 |
| 63 | 1.4.3.2.1 | Teste de CRUD (Associado) | manual | 1d | 2016-06-08 09:00 A | 2016-06-08 18:00 A |  | 100% |  |  | Joyce | 2h | 2h | 200 | 200 |
| 64 | 1.4.3.2.2 | Teste de CRUD (Insumo) | manual | 0.25d | 2016-06-08 09:00 A | 2016-06-08 15:00 A |  | 100% |  |  | Joyce | 2h | 2h | 200 | 200 |
| 65 | 1.4.4 | **Release3** |  | 6d | 2016-06-09 09:00 A | 2016-06-16 18:00 | 52 | 85% | 0.9d |  |  | 130h | 121.1h | 13,000 | 12,110 |
| 66 | 1.4.4.1 | Issues | manual | 1d | 2016-06-16 09:00 | 2016-06-16 18:00 |  |  |  |  | Carlos | 4h |  | 400 |  |
| 67 | 1.4.4.2 | **Implementação** |  | 5d | 2016-06-09 09:00 A | 2016-06-15 18:00 |  | 99% | 0.04d |  |  | 122h | 121.1h | 12,200 | 12,110 |
| 68 | 1.4.4.2.1 | [RFS9] Cadastrar Produção | manual | 2.5d | 2016-06-09 09:00 A | 2016-06-11 17:00 A |  | 100% |  |  | David | 12h | 12h | 1,200 | 1,200 |
| 69 | 1.4.4.2.2 | [RFS10] Consultar Produção | manual | 2.5d | 2016-06-09 09:00 A | 2016-06-11 17:00 A |  | 100% |  |  | David | 12h | 12h | 1,200 | 1,200 |
| 70 | 1.4.4.2.3 | [RFS11] Alterar Produção | manual | 2.5d | 2016-06-09 09:00 A | 2016-06-12 17:00 |  | 98% | 0.06d |  | David | 16h | 15.55h | 1,600 | 1,555 |
| 71 | 1.4.4.2.4 | [RFS12] Remover Produção | manual | 2.5d | 2016-06-09 09:00 A | 2016-06-12 17:00 |  | 98% | 0.06d |  | David | 16h | 15.55h | 1,600 | 1,555 |
| 72 | 1.4.4.2.5 | [RFS17] Cadastrar Maquinário | manual | 0.5d | 2016-06-09 09:00 A | 2016-06-09 17:00 A |  | 100% |  |  | Gabriel; Joyce; Samuel | 12h | 12h | 1,200 | 1,200 |
| 73 | 1.4.4.2.6 | [RFS18] Consultar Maquinário | manual | 0.5d | 2016-06-09 09:00 A | 2016-06-09 17:00 A |  | 100% |  |  | Gabriel; Joyce; Samuel | 12h | 12h | 1,200 | 1,200 |
| 74 | 1.4.4.2.7 | [RFS19] Alterar Maquinário | manual | 0.5d | 2016-06-09 09:00 A | 2016-06-09 17:00 A |  | 100% |  |  | Gabriel; Joyce; Samuel | 12h | 12h | 1,200 | 1,200 |
| 75 | 1.4.4.2.8 | [RFS20] Remover Maquinário | manual | 0.5d | 2016-06-09 09:00 A | 2016-06-09 17:00 A |  | 100% |  |  | Gabriel; Joyce; David | 6h | 6h | 600 | 600 |
| 76 | 1.4.4.2.9 | Relacionamentos/Regras de negocio | manual | 1.5d | 2016-06-09 09:00 A | 2016-06-10 17:00 A |  | 100% |  |  | Gabriel; Joyce; Samuel | 24h | 24h | 2,400 | 2,400 |

| ID | WBS | Task | Type | Duration | Start | Finish | Predecessors | Resources | Work | Cost |
| --- | --- | --- | --- | --- | --- | --- | --- | --- | --- | --- |
| 77 | 1.4.4.3 | **Teste** |  | 2d | 2016-06-15 09:00 | 2016-06-16 18:00 |  |  | 4h | 400 |
| 78 | 1.4.4.3.1 | Teste de CRUD (Produção) | manual | 1d | 2016-06-15 09:00 | 2016-06-15 18:00 |  | Joyce | 2h | 200 |
| 79 | 1.4.4.3.2 | Teste de CRUD (Maquinário) | manual | 0.25d | 2016-06-15 09:00 | 2016-06-15 15:00 |  | Joyce | 2h | 200 |
| 80 | 1.4.5 | **Release4** |  | 6d | 2016-06-16 09:00 | 2016-06-23 18:00 | 65 |  | 98h | 9,800 |
| 81 | 1.4.5.1 | **Implementação** |  | 5d | 2016-06-16 09:00 | 2016-06-22 18:00 |  |  | 94h | 9,400 |
| 82 | 1.4.5.1.1 | [RFS29] Cadastrar Empréstimo | manual | 0.25d | 2016-06-16 09:00 | 2016-06-16 15:00 |  | David; Gabriel; Joyce; Samuel | 8h | 800 |
| 83 | 1.4.5.1.2 | [RFS30] Consultar Empréstimo | manual | 0.25d | 2016-06-16 09:00 | 2016-06-16 15:00 |  | David; Gabriel; Joyce; Samuel | 8h | 800 |
| 84 | 1.4.5.1.3 | [RFS31] Alterar Empréstimo | manual | 0.25d | 2016-06-16 09:00 | 2016-06-16 15:00 |  | David; Gabriel; Joyce; Samuel | 8h | 800 |
| 85 | 1.4.5.1.4 | [RFS32] Remover Empréstimo | manual | 0.38d | 2016-06-16 09:00 | 2016-06-16 16:00 |  | David; Gabriel; Joyce; Samuel | 12h | 1,200 |
| 86 | 1.4.5.1.5 | [RFS33] Cadastrar Patrimônio | manual | 0.25d | 2016-06-16 09:00 | 2016-06-16 15:00 |  | David; Gabriel; Joyce; Samuel | 8h | 800 |
| 87 | 1.4.5.1.6 | [RFS34] Consultar Patrimônio | manual | 0.25d | 2016-06-16 09:00 | 2016-06-16 15:00 |  | David; Gabriel; Joyce; Samuel | 8h | 800 |
| 88 | 1.4.5.1.7 | [RFS35] Alterar Patrimônio | manual | 0.31d | 2016-06-16 09:00 | 2016-06-16 15:30 |  | David; Gabriel; Joyce; Samuel | 10h | 1,000 |
| 89 | 1.4.5.1.8 | [RFS36] Remover Patrimônio | manual | 0.44d | 2016-06-16 09:00 | 2016-06-16 16:30 |  | David; Gabriel; Joyce; Samuel | 14h | 1,400 |
| 90 | 1.4.5.1.9 | Gerar Relatórios de Produção | manual | 1.06d | 2016-06-16 09:00 | 2016-06-17 13:30 |  | David; Gabriel; Joyce; Samuel | 18h | 1,800 |
| 91 | 1.4.5.2 | **Teste** |  | 2d | 2016-06-22 09:00 | 2016-06-23 18:00 |  |  | 4h | 400 |
| 92 | 1.4.5.2.1 | Teste de CRUD (Patrimonio) | manual | 1d | 2016-06-22 09:00 | 2016-06-22 18:00 |  | Joyce | 2h | 200 |
| 93 | 1.4.5.2.2 | Teste de CRUD (Emprestimo) | manual | 0.12d | 2016-06-22 09:00 | 2016-06-22 14:00 |  | Joyce | 1h | 100 |
| 94 | 1.4.5.2.3 | Testar geração de relatório(Produção) | manual | 0.12d | 2016-06-22 09:00 | 2016-06-22 14:00 |  | Joyce | 1h | 100 |
| 95 | 1.4.6 | **Teste de configuração** |  | 26d | 2016-05-19 09:00 | 2016-06-23 18:00 |  |  | 10h | 1,000 |
| 96 | 1.4.6.1 | Gerenciar Blanches | manual | 2.25d | 2016-05-19 09:00 | 2016-05-21 15:00 |  | Carlos | 10h | 1,000 |
